# 金逸项目进度-0305

Schedule from MS Project, 2013-02-18 to 2013-03-29, A marks actual dates.

## Calendars

- 标准: Mon-Fri 08:00-12:00, 13:00-17:00; Sat-Sun off.

## Resources

| Resource | Group |
| --- | --- |
| 刘小波 | 产品 |
| 褚海松 | 产品 |
| 卢正亮 | 产品 |
| 王海莹 | 产品 |
| 陈海兰 | 研发 |
| 李峰 | 研发 |
| 曾雷 | 研发 |
| 彭元军 | 研发 |
| 王辉 | 测试 |
| 王凯 | 测试 |
| 查红丽 | 测试 |
| 高晶晶 | 测试 |
| 张超 | 技术支持 |
| 李康毅 | 技术支持 |
| 袁乐 | 产品 |
| 戈福 | 测试 |
| 郭晨 | 技术支持 |
| 周浪 | 技术支持 |
| 姚建波 | 技术支持 |
| 张鹏 | 技术支持 |
| 姚春敏 | 技术支持 |
| 周孙龙 | 技术支持 |
| 邓春华 | 技术支持 |
| 李瑞雪 | 技术支持 |
| 姚顺新 | 技术支持 |
| 潘海兴 | 技术支持 |
| 欧立坚 | 手机 |
| 邱伟杰 |  |
| 胡磊 |  |
| 金逸 |  |
| 刘明伟 |  |
| 王贤志 |  |
| 罗小媚 |  |
| g |  |
| 张欢欢 |  |
| 陈娟 |  |
| 伍泽文 |  |
| 泰久&金逸 |  |

## Schedule

| ID | WBS | Task | Type | Duration | Start | Finish | Predecessors | Complete | Remaining | Actual start | Constraint | Resources | Work | Actual work |
| --- | --- | --- | --- | --- | --- | --- | --- | --- | --- | --- | --- | --- | --- | --- |
| 1 | 1 | 金逸项目 | manual | 1d | 2013-02-28 | 2013-02-28 |  |  |  |  |  |  |  |  |
| 2 | 2 | 1.金逸电商平台 | manual | 7d | 2013-02-28 | 2013-03-08 |  |  |  |  |  |  |  |  |
| 3 | 3 | **第三方接口** |  | 7d | 2013-02-28 | 2013-03-08 |  | 43% | 4d | 2013-02-25 |  | 陈海兰 | 296h | 120h |
| 4 | 3.1 | 第三方接口文档V1.1 | manual | 1d | 2013-02-25 | 2013-02-25 |  |  |  |  |  |  |  |  |
| 5 | 3.2 | 第三方接口调试 | manual | 4d | 2013-02-28 A | 2013-03-05 |  | 75% | 1d |  |  | 彭元军; 陈海兰 | 64h | 48h |
| 6 | 3.3 | 第三方分销商管理模块 | manual | 3d | 2013-02-28 A | 2013-03-04 A |  | 100% |  |  |  | 曾雷 | 24h | 24h |
| 7 | 3.4 | 第三方分销商价格规则 | manual | 6d | 2013-02-28 A | 2013-03-07 A |  | 100% |  |  |  | 彭元军 | 48h | 48h |
| 8 | 3.5 | 第三方接口维护 | manual | 1d? | 2013-02-28 | 2013-02-28 |  |  |  |  |  | 胡磊 | 8h |  |
| 9 | 3.6 | 会员价格体系 | manual | 6d | 2013-02-28 | 2013-03-07 |  |  |  |  |  | 李峰 | 48h |  |
| 10 | 3.7 | 第二轮测试 | manual | 6d | 2013-02-28 | 2013-03-07 |  |  |  |  |  | 高晶晶 | 48h |  |
| 12 | 4 | **自有分销商定价** |  | 6d | 2013-02-28 A | 2013-03-07 |  | 16% | 5.05d |  |  | 邱伟杰; 李峰 | 304h | 48h |
| 13 | 4.1 | 第二轮测试 | manual | 4d | 2013-02-28 A | 2013-03-05 |  | 75% | 1d |  |  | 查红丽; 王凯 | 64h | 48h |
| 14 | 4.2 | 二次定价排期价格审核 | manual | 6d | 2013-02-28 | 2013-03-07 |  |  |  |  |  | 曾雷; 陈海兰 | 96h |  |
| 15 | 4.3 | 测试环境发布 | manual | 6d | 2013-02-28 | 2013-03-07 |  |  |  |  |  | 陈海兰 | 48h |  |
| 16 | 4.4 | 二次定价完成 | manual | 3d | 2013-02-28 | 2013-03-04 |  |  |  |  |  |  |  |  |
| 17 | 5 | **实时锁座接口** |  | 1d? | 2013-03-04 | 2013-03-04 |  |  |  |  |  |  | 8h |  |
| 18 | 5.1 | 锁座规则 | manual | 1d? | 2013-03-04 | 2013-03-04 |  |  |  |  |  | 陈海兰 | 8h |  |
| 20 | 6 | 自助终端接口新增、调试? |  | 3d | 2013-03-06 A | 2013-03-08 A |  | 100% |  |  | finish no earlier than 2013-03-08 | 陈海兰; 彭元军 | 48h | 48h |
| 21 | 7 | 手机客户接口更改 | manual | 7d | 2013-03-11 | 2013-03-19 | 20 |  |  |  |  | 李峰 | 56h |  |
| 22 | 8 | **平台性维护工作** |  | 1d? | 2013-02-28 | 2013-02-28 |  |  |  |  |  | 李峰 | 72h |  |
| 23 | 8.1 | 排期问题 | manual | 1d? | 2013-02-28 | 2013-02-28 |  |  |  |  |  | 胡磊; 李峰 | 16h |  |
| 24 | 8.2 | 前台：座位图、订票流程 | manual | 1d? | 2013-02-28 | 2013-02-28 |  |  |  |  |  | 胡磊 | 8h |  |
| 25 | 8.3 | 后台：财务对账、会员卡充值核对 | manual | 1d? | 2013-02-28 | 2013-02-28 |  |  |  |  |  | 胡磊; 李峰 | 16h |  |
| 26 | 8.4 | 协助三方沟通工作 | manual | 1d? | 2013-02-28 | 2013-02-28 |  |  |  |  |  | 胡磊 | 8h |  |
| 27 | 8.5 | 凭证、影城出票问题 | manual | 1d? | 2013-02-28 | 2013-02-28 |  |  |  |  |  | 胡磊; 李峰 | 16h |  |
| 28 | 9 | 准生产环境准备工作 | manual | 2d | 2013-03-04 | 2013-03-05 |  |  |  |  |  | 金逸; 胡磊 | 32h |  |

| ID | WBS | Task | Type | Duration | Start | Finish | Predecessors | Complete | Remaining | Total slack | Free slack | Resources | Work | Actual work |
| --- | --- | --- | --- | --- | --- | --- | --- | --- | --- | --- | --- | --- | --- | --- |
| 29 | 10 | **准生产环境发布测试** |  | 3d | 2013-03-06 | 2013-03-08 |  |  |  |  |  | 陈海兰; 胡磊 | 464h |  |
| 30 | 10.1 | 第三轮a测试 | manual | 12d | 2013-03-07 | 2013-03-22 |  |  |  |  |  | 查红丽; 高晶晶; 王凯; 金逸 | 384h |  |
| 31 | 10.2 | 第四轮验收测试 |  | 4d | 2013-03-25 | 2013-03-28 | 30 |  |  | -14d | 0d | 泰久&金逸 | 32h |  |
| 32 | 10.3 | 第三方正式数据联调测试 |  | 2d? | 2013-03-27 | 2013-03-28 | 36 |  |  | -14d | 0d |  |  |  |
| 33 | 11 | **升级部署** |  | 1d | 2013-03-08 | 2013-03-08 |  |  |  |  |  |  |  |  |
| 34 | 11.1 | 升级验证 | manual | 1d | 2013-03-08 | 2013-03-08 |  |  |  |  |  |  |  |  |
| 35 | 12 | **上线** |  | 1d | 2013-03-08 | 2013-03-08 |  |  |  |  |  |  |  |  |
| 36 | 12.1 | 平台(二次定价）web前台 | manual | 1d | 2013-03-26 | 2013-03-26 |  |  |  |  |  |  |  |  |
| 37 | 12.2 | web第三方接口 | manual | 1d | 2013-03-29 | 2013-03-29 | 32 |  |  |  |  |  |  |  |
| 39 | 13 | **2.金逸手机端V1.1升级** |  | 17d | 2013-02-28 | 2013-03-23 |  |  |  |  |  |  | 328h |  |
| 40 | 13.1 | 需求整理 | manual | 5d | 2013-02-18 | 2013-02-22 |  |  |  |  |  | 褚海松; 卢正亮; 王海莹 | 120h |  |
| 41 | 13.2 | 需求分析 | manual | 3d | 2013-02-26 | 2013-02-28 |  |  |  |  |  | 褚海松; 卢正亮 | 48h |  |
| 42 | 13.3 | **ios升级** |  | 11d | 2013-03-04 | 2013-03-18 |  |  |  |  |  |  | 160h |  |
| 43 | 13.3.1 | UI资源包 | manual | 1d | 2013-03-04 | 2013-03-04 |  |  |  |  |  | 陈娟 | 8h |  |
| 44 | 13.3.2 | 编码开发 | manual | 13d | 2013-03-06 | 2013-03-22 |  |  |  |  |  | 张欢欢 | 104h |  |
| 45 | 13.3.3 | 测试反馈 | manual | 6d | 2013-03-15 | 2013-03-22 |  |  |  |  |  | 高晶晶 | 48h |  |
| 46 | 13.4 | 安卓 | manual | 5d | 2013-02-28 | 2013-03-06 |  |  |  |  |  |  |  |  |
| 47 | 13.5 | 提交应用市场 | milestone, manual | 0d | 2013-03-22 | 2013-03-22 |  |  |  |  |  | 伍泽文; 王海莹 |  |  |
| 49 | 14 | **3.金逸购票终端** |  | 18d | 2013-02-28 A | 2013-03-25 |  | 4% | 17.23d |  |  |  | 1056h | 32h |
| 50 | 14.1 | 需求整理(V1.0取票、会员卡购票） | manual | 4d | 2013-02-28 A | 2013-03-05 A |  | 100% |  |  |  | 袁乐 | 32h | 32h |
| 51 | 14.2 | 会员卡购票需求整理 | manual | 2d | 2013-03-06 | 2013-03-07 |  |  |  |  |  |  |  |  |
| 52 | 14.3 | **硬件调试** |  | 10d | 2013-03-11 | 2013-03-22 |  |  |  |  |  | 刘明伟; 王贤志 | 400h |  |
| 53 | 14.3.1 | 刷卡设备 | manual | 10d | 2013-03-11 | 2013-03-22 |  |  |  |  |  | 刘明伟 | 80h |  |
| 54 | 14.3.2 | 密码键盘 | manual | 10d | 2013-03-11 | 2013-03-22 |  |  |  |  |  | 刘明伟 | 80h |  |
| 55 | 14.3.3 | 双打印机 | manual | 10d | 2013-03-11 | 2013-03-22 |  |  |  |  |  | 刘明伟 | 80h |  |

| ID | WBS | Task | Type | Duration | Start | Finish | Predecessors | Total slack | Constraint | Resources | Work |
| --- | --- | --- | --- | --- | --- | --- | --- | --- | --- | --- | --- |
| 56 | 14.4 | **编码开发** |  | 13d | 2013-02-28 | 2013-03-18 |  |  |  |  | 184h |
| 57 | 14.4.1 | 取票功能 | manual | 5d | 2013-03-05 | 2013-03-11 |  |  |  | 刘明伟 | 40h |
| 58 | 14.4.2 | **会员购票** |  | 10d | 2013-03-05 | 2013-03-18 |  |  |  |  | 144h |
| 59 | 14.4.2.1 | 界面修改 | manual | 3d | 2013-03-11 | 2013-03-13 |  |  |  | 罗小媚 | 24h |
| 60 | 14.4.2.2 | 软件交互调整 | manual | 3d | 2013-03-11 | 2013-03-13 |  |  |  | 刘明伟; 王贤志 | 48h |
| 61 | 14.4.2.3 | 平台联调 | manual | 3d | 2013-03-14 | 2013-03-18 | 60 |  |  | 陈海兰; 刘明伟; 王贤志 | 72h |
| 62 | 14.5 | **测试** |  | 5d | 2013-03-18 | 2013-03-22 |  |  |  |  | 184h |
| 63 | 14.5.1 | 数据录入 | manual | 4d | 2013-03-04 | 2013-03-07 |  |  |  | 戈福 | 32h |
| 64 | 14.5.2 | 取票测试 |  | 3d | 2013-03-11 | 2013-03-13 |  | 0d | start no earlier than 2013-03-11 | 戈福 | 24h |
| 65 | 14.5.3 | 第一轮测试 | manual | 4d | 2013-03-14 | 2013-03-19 | 64 |  |  | 戈福; 查红丽 | 64h |
| 66 | 14.5.4 | 第二轮测试 | manual | 4d | 2013-03-20 | 2013-03-25 | 65 |  |  | 戈福; 查红丽 | 64h |
| 68 | 14.6 | **4. 终端设备安装** |  | 17d | 2013-03-04 | 2013-03-26 |  | 0d |  | 张超 | 256h |
| 69 | 14.6.1 | 山东 | manual | 5d | 2013-03-04 | 2013-03-08 |  |  |  |  |  |
| 70 | 14.6.2 | 河北、江苏 | manual | 10d | 2013-03-11 | 2013-03-22 |  |  |  | 周浪 | 80h |
| 71 | 14.6.3 | 安徽、浙江 | manual | 5d | 2013-03-18 | 2013-03-22 |  |  |  | 姚顺新 | 40h |
| 72 | 14.6.4 | 辽宁、内蒙 | manual | 5d | 2013-03-18 | 2013-03-22 |  |  |  |  |  |
| 73 | 14.6.5 | 山西、广西 | manual | 2d | 2013-03-25 | 2013-03-26 |  |  |  |  |  |
